# 爱从游移动端平台

Schedule from a web Gantt chart, 2025-10-08 to 2026-02-12.
Saturdays and Sundays are off

## Schedule

| ID | WBS | Task | Duration | Start | Finish | Predecessors | Complete | Status |
| --- | --- | --- | --- | --- | --- | --- | --- | --- |
| 2 | 1 | **项目启动与规划** | 5d | 2025-10-08 | 2025-10-14 |  | 100% |  |
| 3 | 1.1 | 制定项目章程 V4.0 | 1d | 2025-10-08 | 2025-10-08 |  | 100% | done |
| 4 | 1.2 | 敏捷开发环境与工具配置 | 2d | 2025-10-09 | 2025-10-10 | 3 | 100% | done |
| 5 | 1.3 | P0 需求清单与 PBL 定稿 | 4d | 2025-10-09 | 2025-10-14 | 3 | 100% |  |
| 6 | 2 | **产品设计与架构** | 6d | 2025-10-15 | 2025-10-22 |  |  | waiting |
| 7 | 2.1 | 高保真原型图设计 | 4d | 2025-10-15 | 2025-10-20 | 5 |  | waiting |
| 8 | 2.2 | 系统技术架构与数据库设计 | 3d | 2025-10-15 | 2025-10-17 | 5 |  | waiting |
| 9 | 2.3 | API 接口文档 V1.0 输出 | 3d | 2025-10-20 | 2025-10-22 | 8 |  | waiting |
| 10 | 3 | **Release 1.0 迭代开发 (MVP)** | 33d | 2025-10-23 | 2025-12-08 |  |  | waiting |
| 11 | 3.1 | **冲刺 2：基础功能开发** | 6d | 2025-10-23 | 2025-10-30 |  |  | waiting |
| 12 | 3.1.1 | 用户认证接口开发 | 3d | 2025-10-23 | 2025-10-27 | 9 |  | waiting |
| 13 | 3.1.2 | 登录/注册/个人中心页面实现 | 4d | 2025-10-23 | 2025-10-28 | 9 |  | waiting |
| 14 | 3.1.3 | 基础功能测试与缺陷修复 | 3d | 2025-10-28 | 2025-10-30 | 12 |  | waiting |
| 15 | 3.2 | **冲刺 3：核心功能开发（一）** | 5d | 2025-10-31 | 2025-11-06 |  |  | waiting |
| 16 | 3.2.1 | 课程管理接口开发 | 3d | 2025-10-31 | 2025-11-04 | 14 |  | waiting |
| 17 | 3.2.2 | 教师/学生课程模块实现 | 4d | 2025-10-31 | 2025-11-05 | 14 |  | waiting |
| 18 | 3.2.3 | 离线缓存功能实现 | 2d | 2025-11-05 | 2025-11-06 |  |  | waiting |
| 19 | 3.3 | **冲刺 4：核心功能开发（二）** | 7d | 2025-11-07 | 2025-11-17 |  |  | waiting |
| 20 | 3.3.1 | 作业管理接口开发 | 2d | 2025-11-07 | 2025-11-10 | 18 |  | waiting |
| 21 | 3.3.2 | 批改/提交页面实现 | 4d | 2025-11-07 | 2025-11-12 | 18 |  | waiting |
| 22 | 3.3.3 | 全量功能联调与测试 | 3d | 2025-11-13 | 2025-11-17 | 21 |  | waiting |
| 23 | 3.4 | **冲刺 5：全量测试与优化** | 8d | 2025-11-18 | 2025-11-27 |  |  | waiting |
| 24 | 3.4.1 | 全量回归测试 | 3d | 2025-11-18 | 2025-11-20 | 22 |  | waiting |
| 25 | 3.4.2 | 初步性能与兼容性测试 | 2d | 2025-11-21 | 2025-11-24 |  |  | waiting |
| 26 | 3.4.3 | 灰度测试组织与缺陷修复 | 3d | 2025-11-25 | 2025-11-27 | 25 |  | waiting |

| ID | WBS | Task | Type | Duration | Start | Finish | Predecessors | Status |
| --- | --- | --- | --- | --- | --- | --- | --- | --- |
| 27 | 3.5 | **冲刺 6：[R1.0 增量] 冻结与 UAT 验收** |  | 7d | 2025-11-28 | 2025-12-08 |  | waiting |
| 28 | 3.5.1 | 代码冻结与非功能性测试 |  | 3d | 2025-11-28 | 2025-12-02 | 26 | waiting |
| 29 | 3.5.2 | 最终用户验收测试 (UAT) 执行 |  | 2d | 2025-12-03 | 2025-12-04 | 28 | waiting |
| 30 | 3.5.3 | UAT 缺陷修复与最终文档提交 |  | 2d | 2025-12-05 | 2025-12-08 | 29 | waiting |
| 31 | 4 | **[里程碑] Release 1.0 (V1.0.0) 正式发布** |  | 14d | 2025-12-09 | 2025-12-26 |  | waiting |
| 32 | 4.1 | 生产服务器部署与配置 |  | 3d | 2025-12-09 | 2025-12-11 | 30 | waiting |
| 33 | 4.2 | 应用商店上架材料提交 |  | 1d | 2025-12-12 | 2025-12-12 | 32 | waiting |
| 34 | 4.3 | Release 1.0 (V1.0.0) 上线启动 | fixed start | 1d | 2025-12-15 | 2025-12-15 | 33 | waiting |
| 35 | 4.4 | **冲刺 7：R1.0 稳定与监控** |  | 4d | 2025-12-16 | 2025-12-19 |  | waiting |
| 36 | 4.4.1 | 线上数据监控与分析 (3天) |  | 3d | 2025-12-16 | 2025-12-18 | 34 | waiting |
| 37 | 4.4.2 | 紧急问题热修复与部署 |  | 3d | 2025-12-16 | 2025-12-18 | 34 | waiting |
| 38 | 4.4.3 | 项目干系人正式验收 |  | 1d | 2025-12-19 | 2025-12-19 | 37 | waiting |
| 39 | 4.5 | **冲刺 8：项目收尾与 R2.0 规划** |  | 5d | 2025-12-22 | 2025-12-26 |  | waiting |
| 40 | 4.5.1 | 项目成果复盘（回顾会） |  | 2d | 2025-12-22 | 2025-12-23 | 38 | waiting |
| 41 | 4.5.2 | 用户反馈分析与 R2.0 待办整理 |  | 2d | 2025-12-24 | 2025-12-25 | 40 | waiting |
| 42 | 4.5.3 | R1.0 文档归档与知识移交 |  | 1d | 2025-12-26 | 2025-12-26 | 41 | waiting |
| 43 | 5 | **Release 2.0 迭代开发** |  | 34d | 2025-12-29 | 2026-02-12 |  | waiting |
| 44 | 5.1 | **冲刺 9：R2.0 社区模块开发（一）** |  | 5d | 2025-12-29 | 2026-01-02 |  | waiting |
| 45 | 5.1.1 | 社区/讨论区接口与数据库设计 |  | 3d | 2025-12-29 | 2025-12-31 | 42 | waiting |
| 46 | 5.1.2 | 讨论区基础功能实现 |  | 2d | 2026-01-01 | 2026-01-02 | 45 | waiting |
| 47 | 5.1.3 | 高级学习数据接口开发 |  | 2d | 2026-01-01 | 2026-01-02 | 45 | waiting |
| 48 | 5.2 | **冲刺 10：R2.0 社区功能深化与跟踪** |  | 5d | 2026-01-05 | 2026-01-09 |  | waiting |
| 49 | 5.2.1 | 评论/点赞/关注等社交功能实现 |  | 2d | 2026-01-05 | 2026-01-06 | 47 | waiting |
| 50 | 5.2.2 | 高级学习进度图表 UI/UX 开发 |  | 3d | 2026-01-05 | 2026-01-07 |  | waiting |
| 51 | 5.2.3 | 功能联调与测试 |  | 2d | 2026-01-08 | 2026-01-09 | 50 | waiting |

| ID | WBS | Task | Type | Duration | Start | Finish | Predecessors | Status |
| --- | --- | --- | --- | --- | --- | --- | --- | --- |
| 52 | 5.3 | **冲刺 11：R2.0 体验优化与回归测试** |  | 8d | 2026-01-12 | 2026-01-21 |  | waiting |
| 53 | 5.3.1 | 性能优化 V2.0 (速度/内存) |  | 3d | 2026-01-12 | 2026-01-14 | 51 | waiting |
| 54 | 5.3.2 | 用户流程深度优化与界面动效调整 |  | 2d | 2026-01-15 | 2026-01-16 | 53 | waiting |
| 55 | 5.3.3 | 全面回归测试 |  | 3d | 2026-01-19 | 2026-01-21 | 54 | waiting |
| 56 | 5.4 | **冲刺 12：[R2.0 增量] 冻结与 UAT 验收** |  | 7d | 2026-01-22 | 2026-01-30 |  | waiting |
| 57 | 5.4.1 | 代码冻结与 UAT 组织 |  | 2d | 2026-01-22 | 2026-01-23 | 55 | waiting |
| 58 | 5.4.2 | Release 2.0 UAT 组织与执行 |  | 3d | 2026-01-26 | 2026-01-28 | 57 | waiting |
| 59 | 5.4.3 | UAT 缺陷修复与最终增量提交 |  | 2d | 2026-01-29 | 2026-01-30 | 58 | waiting |
| 60 | 5.5 | **[里程碑] Release 2.0 (V2.0.0) 正式发布** |  | 2d | 2026-02-02 | 2026-02-03 |  | waiting |
| 61 | 5.5.1 | V2.0 生产环境部署与提审 |  | 1d | 2026-02-02 | 2026-02-02 | 59 | waiting |
| 62 | 5.5.2 | Release 2.0 (V2.0.0) 上线启动 | fixed start | 1d | 2026-02-03 | 2026-02-03 | 61 | waiting |
| 63 | 5.6 | **冲刺 13：R2.0 稳定与总结** |  | 7d | 2026-02-04 | 2026-02-12 |  | waiting |
| 64 | 5.6.1 | 线上数据监控与热修复 |  | 3d | 2026-02-04 | 2026-02-06 | 62 | waiting |
| 65 | 5.6.2 | 项目/团队复盘，知识移交 |  | 2d | 2026-02-09 | 2026-02-10 | 64 | waiting |
| 66 | 5.6.3 | Release 3.0 规划 |  | 2d | 2026-02-11 | 2026-02-12 | 65 | waiting |
